# پروژه ساخت ویلا یک طبقه

Schedule from MS Project, 2026-02-01 to 2026-07-22, status date 2026-03-01, costs in تومان, A marks actual dates.

## Calendars

- my_calendar: Mon-Wed 08:00-12:00, 13:00-17:00; Thu-Fri off; Sat 09:00-12:00, 13:00-16:00, 17:00-21:00; Sun 08:00-12:00, 13:00-17:00. Exceptions (off unless hours are given): 2026-03-21 to 2026-03-24 (norouz_holidays).

## Resources

| Resource | Unit | Rate |
| --- | --- | --- |
| مهندس |  | 250000 |
| سرکارگر |  | 250000 |
| کارگر ساده |  | 170000 |
| تاسیساتی |  | 200000 |
| برقکار |  | 110000 |
| بتن | m3 | 2000000 |
| میلگرد | kg | 30000 |
| آجر | عدد | 3000 |
| سیمان | کیسه | 120000 |
| لوله | متر | 172000 |
| مدیر پروژه |  | 300000 |
| ماشین آلات |  | 200000 |

## Schedule

| ID | WBS | Task | Type | Duration | Start | Finish | Predecessors | Complete | Remaining | Baseline start | Baseline finish | Baseline duration | Baseline 1 start | Baseline 1 finish | Total slack | Free slack | Resources | Work | Actual work | Cost | Baseline cost | Actual cost | Text1 | Text2 |
| --- | --- | --- | --- | --- | --- | --- | --- | --- | --- | --- | --- | --- | --- | --- | --- | --- | --- | --- | --- | --- | --- | --- | --- | --- |
| 1 | 1 | **مدیریت و برنامه‌ریزی پروژه** |  | 32.2d | 2026-02-01 A | 2026-03-15 |  | 62% | 12.18d | 2026-02-01 | 2026-03-15 | 32.2d | 2026-02-01 | 2026-03-15 | 93.1d |  |  | 353.6h | 232h | 92,080,000 | 92,080,000 | 60,000,000 |  |  |
| 2 | 1.1 | **برنامه‌ریزی پروژه** |  | 21d | 2026-02-01 A | 2026-02-28 A |  | 100% |  | 2026-02-01 | 2026-02-28 | 21d | 2026-02-01 | 2026-02-28 |  |  |  | 200h | 200h | 52,000,000 | 52,000,000 | 52,000,000 |  |  |
| 3 | 1.1.1 | **تعریف محدوده پروژه** |  | 11d | 2026-02-01 A | 2026-02-15 A |  | 100% |  | 2026-02-01 | 2026-02-15 | 11d | 2026-02-01 | 2026-02-15 |  |  |  | 120h | 120h | 31,600,000 | 31,600,000 | 31,600,000 |  |  |
| 4 | 1.1.1.1 | شروع پروژه | milestone | 0d | 2026-02-01 A | 2026-02-01 A |  | 100% |  | 2026-02-01 | 2026-02-01 | 0d | 2026-02-01 | 2026-02-01 |  |  |  |  |  |  |  |  |  |  |
| 5 | 1.1.1.2 | شناسایی نیازهای کارفرما |  | 3d | 2026-02-01 A | 2026-02-03 A | 4 | 100% |  | 2026-02-01 | 2026-02-03 | 3d | 2026-02-01 | 2026-02-03 |  |  | مهندس; مدیر پروژه | 32h | 32h | 8,400,000 | 8,400,000 | 8,400,000 | 1.77 | 0.34 |
| 6 | 1.1.1.3 | بررسی کاربری ویلا |  | 2d | 2026-02-04 A | 2026-02-07 A | 5 | 100% |  | 2026-02-04 | 2026-02-07 | 2d | 2026-02-04 | 2026-02-07 |  |  | مهندس; مدیر پروژه | 24h | 24h | 6,400,000 | 6,400,000 | 6,400,000 | 1.35 | 0.22 |
| 7 | 1.1.1.4 | بررسی محدودیت زمین |  | 3d | 2026-02-07 A | 2026-02-10 A | 6 | 100% |  | 2026-02-07 | 2026-02-10 | 3d | 2026-02-07 | 2026-02-10 |  |  | مهندس; مدیر پروژه | 32h | 32h | 8,400,000 | 8,400,000 | 8,400,000 | 1.77 | 0.34 |
| 8 | 1.1.1.5 | جمع‌بندی محدوده |  | 3d | 2026-02-10 A | 2026-02-15 A | 7 | 100% |  | 2026-02-10 | 2026-02-15 | 3d | 2026-02-10 | 2026-02-15 |  |  | مهندس; مدیر پروژه | 32h | 32h | 8,400,000 | 8,400,000 | 8,400,000 | 1.77 | 0.34 |
| 9 | 1.1.2 | **تدوین برنامه زمان‌بندی** |  | 5d | 2026-02-15 A | 2026-02-22 A |  | 100% |  | 2026-02-15 | 2026-02-22 | 5d | 2026-02-15 | 2026-02-22 |  |  |  | 40h | 40h | 10,000,000 | 10,000,000 | 10,000,000 |  |  |
| 10 | 1.1.2.1 | شناسایی فعالیت‌ها |  | 1d | 2026-02-15 A | 2026-02-16 A | 8 | 100% |  | 2026-02-15 | 2026-02-16 | 1d | 2026-02-15 | 2026-02-16 |  |  | مهندس | 8h | 8h | 2,000,000 | 2,000,000 | 2,000,000 | 0.42 | 0.11 |
| 11 | 1.1.2.2 | تعیین توالی فعالیت‌ها |  | 1d | 2026-02-16 A | 2026-02-17 A | 10 | 100% |  | 2026-02-16 | 2026-02-17 | 1d | 2026-02-16 | 2026-02-17 |  |  | مهندس | 8h | 8h | 2,000,000 | 2,000,000 | 2,000,000 | 0.42 | 0.11 |
| 12 | 1.1.2.3 | تخمین مدت فعالیت‌ها |  | 1d | 2026-02-17 A | 2026-02-18 A | 11 | 100% |  | 2026-02-17 | 2026-02-18 | 1d | 2026-02-17 | 2026-02-18 |  |  | مهندس | 8h | 8h | 2,000,000 | 2,000,000 | 2,000,000 | 0.42 | 0.11 |
| 13 | 1.1.2.4 | تعریف روابط پیش‌نیازی |  | 1d | 2026-02-18 A | 2026-02-21 A | 12 | 100% |  | 2026-02-18 | 2026-02-21 | 1d | 2026-02-18 | 2026-02-21 |  |  | مهندس | 8h | 8h | 2,000,000 | 2,000,000 | 2,000,000 | 0.42 | 0.11 |
| 14 | 1.1.2.5 | بازبینی برنامه زمان |  | 1d | 2026-02-21 A | 2026-02-22 A | 13 | 100% |  | 2026-02-21 | 2026-02-22 | 1d | 2026-02-21 | 2026-02-22 |  |  | مهندس | 8h | 8h | 2,000,000 | 2,000,000 | 2,000,000 | 0.42 | 0.11 |
| 15 | 1.1.3 | **برآورد هزینه پروژه** |  | 5d | 2026-02-22 A | 2026-02-28 A |  | 100% |  | 2026-02-22 | 2026-02-28 | 5d | 2026-02-22 | 2026-02-28 |  |  |  | 40h | 40h | 10,400,000 | 10,400,000 | 10,400,000 |  |  |
| 16 | 1.1.3.1 | شناسایی اقلام هزینه |  | 1d | 2026-02-22 A | 2026-02-23 A | 14 | 100% |  | 2026-02-22 | 2026-02-23 | 1d | 2026-02-22 | 2026-02-23 |  |  | مهندس | 8h | 8h | 2,000,000 | 2,000,000 | 2,000,000 | 0.42 | 0.11 |
| 17 | 1.1.3.2 | برآورد هزینه مصالح |  | 1d | 2026-02-23 A | 2026-02-24 A | 16 | 100% |  | 2026-02-23 | 2026-02-24 | 1d | 2026-02-23 | 2026-02-24 |  |  | مهندس | 8h | 8h | 2,000,000 | 2,000,000 | 2,000,000 | 0.42 | 0.11 |
| 18 | 1.1.3.3 | برآورد هزینه نیروی انسانی |  | 1d | 2026-02-24 A | 2026-02-25 A | 17 | 100% |  | 2026-02-24 | 2026-02-25 | 1d | 2026-02-24 | 2026-02-25 |  |  | مهندس | 8h | 8h | 2,000,000 | 2,000,000 | 2,000,000 | 0.42 | 0.11 |
| 19 | 1.1.3.4 | تجمیع هزینه‌ها |  | 1d | 2026-02-25 A | 2026-02-28 A | 18 | 100% |  | 2026-02-25 | 2026-02-28 | 1d | 2026-02-25 | 2026-02-28 |  |  | مهندس | 8h | 8h | 2,000,000 | 2,000,000 | 2,000,000 | 0.42 | 0.11 |
| 20 | 1.1.3.5 | تصویب بودجه |  | 1d | 2026-02-28 A | 2026-02-28 A | 19 | 100% |  | 2026-02-28 | 2026-02-28 | 1d | 2026-02-28 | 2026-02-28 |  |  | مدیر پروژه | 8h | 8h | 2,400,000 | 2,400,000 | 2,400,000 | 0.51 | 0.11 |
| 21 | 1.2 | **کنترل پروژه** |  | 12.2d | 2026-02-28 A | 2026-03-15 |  | 21% | 9.66d | 2026-02-28 | 2026-03-15 | 12.2d | 2026-02-28 | 2026-03-15 | 93.1d |  |  | 153.6h | 32h | 40,080,000 | 40,080,000 | 8,000,000 |  |  |
| 22 | 1.2.1 | **کنترل زمان** |  | 5d | 2026-02-28 A | 2026-03-04 |  | 40% | 3d | 2026-02-28 | 2026-03-04 | 5d | 2026-02-28 | 2026-03-04 | 97.3d |  |  | 40h | 16h | 10,000,000 | 10,000,000 | 4,000,000 |  |  |
| 23 | 1.2.1.1 | تعیین تاریخ وضعیت |  | 1d | 2026-02-28 A | 2026-02-28 A | 20SS | 100% |  | 2026-02-28 | 2026-02-28 | 1d | 2026-02-28 | 2026-02-28 |  |  | مهندس | 8h | 8h | 2,000,000 | 2,000,000 | 2,000,000 | 0.42 | 0.11 |
| 24 | 1.2.1.2 | ثبت پیشرفت برنامه‌ای |  | 1d | 2026-03-01 A | 2026-03-01 A | 23 | 100% |  | 2026-03-01 | 2026-03-01 | 1d | 2026-03-01 | 2026-03-01 |  |  | مهندس | 8h | 8h | 2,000,000 | 2,000,000 | 2,000,000 | 0.42 | 0.11 |
| 25 | 1.2.1.3 | ثبت پیشرفت واقعی |  | 1d | 2026-03-02 | 2026-03-02 | 24 |  |  | 2026-03-02 | 2026-03-02 | 1d | 2026-03-02 | 2026-03-02 | 97.3d | 0d | مهندس | 8h |  | 2,000,000 | 2,000,000 |  | 0.42 | 0.11 |
| 26 | 1.2.1.4 | تحلیل انحراف زمانی |  | 1d | 2026-03-03 | 2026-03-03 | 25 |  |  | 2026-03-03 | 2026-03-03 | 1d | 2026-03-03 | 2026-03-03 | 97.3d | 0d | مهندس | 8h |  | 2,000,000 | 2,000,000 |  | 0.42 | 0.11 |
| 27 | 1.2.1.5 | اصلاح برنامه |  | 1d | 2026-03-04 | 2026-03-04 | 26 |  |  | 2026-03-04 | 2026-03-04 | 1d | 2026-03-04 | 2026-03-04 | 97.3d | 0d | مهندس | 8h |  | 2,000,000 | 2,000,000 |  | 0.42 | 0.11 |

| ID | WBS | Task | Duration | Start | Finish | Predecessors | Complete | Remaining | Baseline start | Baseline finish | Baseline duration | Baseline 1 start | Baseline 1 finish | Total slack | Free slack | Resources | Work | Actual work | Cost | Baseline cost | Actual cost | Text1 | Text2 |
| --- | --- | --- | --- | --- | --- | --- | --- | --- | --- | --- | --- | --- | --- | --- | --- | --- | --- | --- | --- | --- | --- | --- | --- |
| 28 | 1.2.2 | **کنترل هزینه** | 8.2d | 2026-02-28 A | 2026-03-09 |  | 24% | 6.2d | 2026-02-28 | 2026-03-09 | 8.2d | 2026-02-28 | 2026-03-09 | 93.1d |  |  | 65.6h | 16h | 17,280,000 | 17,280,000 | 4,000,000 |  |  |
| 29 | 1.2.2.1 | ثبت هزینه واقعی | 2d | 2026-02-28 A | 2026-03-01 A | 20SS | 100% |  | 2026-02-28 | 2026-03-01 | 2d | 2026-02-28 | 2026-03-01 |  |  | مهندس | 16h | 16h | 4,000,000 | 4,000,000 | 4,000,000 | 0.84 | 0.22 |
| 30 | 1.2.2.2 | مقایسه با بودجه | 4d | 2026-03-02 | 2026-03-07 | 29 |  |  | 2026-03-02 | 2026-03-07 | 4d | 2026-03-02 | 2026-03-07 | 93.1d | 0d | مهندس | 32h |  | 8,000,000 | 8,000,000 |  | 1.69 | 0.45 |
| 31 | 1.2.2.3 | تحلیل انحراف هزینه | 1d | 2026-03-07 | 2026-03-08 | 30 |  |  | 2026-03-07 | 2026-03-08 | 1d | 2026-03-07 | 2026-03-08 | 93.1d | 0d | مدیر پروژه | 8h |  | 2,400,000 | 2,400,000 |  | 0.51 | 0.11 |
| 32 | 1.2.2.4 | پیش‌بینی هزینه نهایی | 1d | 2026-03-08 | 2026-03-09 | 31 |  |  | 2026-03-08 | 2026-03-09 | 1d | 2026-03-08 | 2026-03-09 | 93.1d | 0d | مدیر پروژه | 8h |  | 2,400,000 | 2,400,000 |  | 0.51 | 0.11 |
| 33 | 1.2.2.5 | گزارش هزینه | 0.2d | 2026-03-09 | 2026-03-09 | 32 |  |  | 2026-03-09 | 2026-03-09 | 0.2d | 2026-03-09 | 2026-03-09 | 93.1d | 0d | مدیر پروژه | 1.6h |  | 480,000 | 480,000 |  | 0.1 | 0.02 |
| 34 | 1.2.3 | **گزارش‌دهی** | 9.2d | 2026-03-03 | 2026-03-15 |  |  |  | 2026-03-03 | 2026-03-15 | 9.2d | 2026-03-03 | 2026-03-15 | 93.1d |  |  | 48h |  | 12,800,000 | 12,800,000 |  |  |  |
| 35 | 1.2.3.1 | تهیه گزارش پیشرفت | 2d | 2026-03-03 | 2026-03-04 | 27FS-2d |  |  | 2026-03-03 | 2026-03-04 | 2d | 2026-03-03 | 2026-03-04 | 97.3d | 4.2d | مهندس | 16h |  | 4,000,000 | 4,000,000 |  | 0.84 | 0.22 |
| 36 | 1.2.3.2 | تهیه گزارش هزینه | 1d | 2026-03-09 | 2026-03-10 | 33 |  |  | 2026-03-09 | 2026-03-10 | 1d | 2026-03-09 | 2026-03-10 | 93.1d | 0d | مهندس | 8h |  | 2,000,000 | 2,000,000 |  | 0.42 | 0.11 |
| 37 | 1.2.3.3 | تهیه نمودارها | 1d | 2026-03-10 | 2026-03-11 | 35, 36 |  |  | 2026-03-10 | 2026-03-11 | 1d | 2026-03-10 | 2026-03-11 | 93.1d | 0d | مهندس | 8h |  | 2,000,000 | 2,000,000 |  | 0.42 | 0.11 |
| 38 | 1.2.3.4 | بازبینی گزارش | 1d | 2026-03-11 | 2026-03-14 | 37 |  |  | 2026-03-11 | 2026-03-14 | 1d | 2026-03-11 | 2026-03-14 | 93.1d | 0d | مدیر پروژه | 8h |  | 2,400,000 | 2,400,000 |  | 0.51 | 0.11 |
| 39 | 1.2.3.5 | ارائه گزارش | 1d | 2026-03-14 | 2026-03-15 | 38 |  |  | 2026-03-14 | 2026-03-15 | 1d | 2026-03-14 | 2026-03-15 | 93.1d |  | مدیر پروژه | 8h |  | 2,400,000 | 2,400,000 |  | 0.51 | 0.11 |
| 40 | 2 | **آماده‌سازی و تجهیز کارگاه** | 30d | 2026-03-04 | 2026-04-19 |  |  |  | 2026-03-04 | 2026-04-19 | 30d | 2026-03-04 | 2026-04-19 | 0d |  |  | 1352h |  | 275,160,000 | 275,160,000 |  |  |  |
| 41 | 2.1 | **عملیات مقدماتی** | 19d | 2026-03-04 | 2026-04-04 |  |  |  | 2026-03-04 | 2026-04-04 | 19d | 2026-03-04 | 2026-04-04 | 0d |  |  | 472h |  | 90,880,000 | 90,880,000 |  |  |  |
| 42 | 2.1.1 | **تحویل و بررسی زمین** | 5d | 2026-03-04 | 2026-03-10 |  |  |  | 2026-03-04 | 2026-03-10 | 5d | 2026-03-04 | 2026-03-10 | 0d |  |  | 56h |  | 14,400,000 | 14,400,000 |  |  |  |
| 43 | 2.1.1.1 | بازدید از زمین | 1d | 2026-03-04 | 2026-03-04 | 20FS+3d |  |  | 2026-03-04 | 2026-03-04 | 1d | 2026-03-04 | 2026-03-04 | 0d |  | مدیر پروژه; سرکارگر; مهندس | 24h |  | 6,400,000 | 6,400,000 |  | 1.35 | 0.11 |
| 44 | 2.1.1.2 | بررسی حدود زمین | 1d | 2026-03-07 | 2026-03-07 | 43 |  |  | 2026-03-07 | 2026-03-07 | 1d | 2026-03-07 | 2026-03-07 | 0d |  | مهندس | 8h |  | 2,000,000 | 2,000,000 |  | 0.42 | 0.11 |
| 45 | 2.1.1.3 | بررسی دسترسی | 1d | 2026-03-07 | 2026-03-08 | 44 |  |  | 2026-03-07 | 2026-03-08 | 1d | 2026-03-07 | 2026-03-08 | 0d |  | مهندس | 8h |  | 2,000,000 | 2,000,000 |  | 0.42 | 0.11 |
| 46 | 2.1.1.4 | مستندسازی وضعیت | 1d | 2026-03-08 | 2026-03-09 | 45 |  |  | 2026-03-08 | 2026-03-09 | 1d | 2026-03-08 | 2026-03-09 | 0d |  | مهندس | 8h |  | 2,000,000 | 2,000,000 |  | 0.42 | 0.11 |
| 47 | 2.1.1.5 | تأیید تحویل زمین | 1d | 2026-03-09 | 2026-03-10 | 46 |  |  | 2026-03-09 | 2026-03-10 | 1d | 2026-03-09 | 2026-03-10 | 0d |  | مهندس | 8h |  | 2,000,000 | 2,000,000 |  | 0.42 | 0.11 |
| 48 | 2.1.2 | **تسطیح زمین** | 9d | 2026-03-10 | 2026-03-29 |  |  |  | 2026-03-10 | 2026-03-29 | 9d | 2026-03-10 | 2026-03-29 | 0d |  |  | 344h |  | 60,400,000 | 60,400,000 |  |  |  |
| 49 | 2.1.2.1 | خاکبرداری | 3d | 2026-03-10 | 2026-03-15 | 47 |  |  | 2026-03-10 | 2026-03-15 | 3d | 2026-03-10 | 2026-03-15 | 0d |  | سرکارگر; کارگر ساده [500%] | 136h |  | 24,400,000 | 24,400,000 |  | 5.14 | 0.34 |
| 50 | 2.1.2.2 | تراکم بستر | 2d | 2026-03-15 | 2026-03-17 | 49 |  |  | 2026-03-15 | 2026-03-17 | 2d | 2026-03-15 | 2026-03-17 | 0d |  | کارگر ساده [500%] | 80h |  | 13,600,000 | 13,600,000 |  | 2.87 | 0.22 |
| 51 | 2.1.2.3 | کنترل تراز | 3d | 2026-03-17 | 2026-03-28 | 50 |  |  | 2026-03-17 | 2026-03-28 | 3d | 2026-03-17 | 2026-03-28 | 0d |  | کارگر ساده [500%] | 120h |  | 20,400,000 | 20,400,000 |  | 4.3 | 0.34 |
| 52 | 2.1.2.4 | تأیید تسطیح | 1d | 2026-03-28 | 2026-03-29 | 51 |  |  | 2026-03-28 | 2026-03-29 | 1d | 2026-03-28 | 2026-03-29 | 0d |  | سرکارگر | 8h |  | 2,000,000 | 2,000,000 |  | 0.42 | 0.11 |

| ID | WBS | Task | Duration | Start | Finish | Predecessors | Baseline start | Baseline finish | Baseline duration | Baseline 1 start | Baseline 1 finish | Total slack | Free slack | Resources | Work | Cost | Baseline cost | Text1 | Text2 |
| --- | --- | --- | --- | --- | --- | --- | --- | --- | --- | --- | --- | --- | --- | --- | --- | --- | --- | --- | --- |
| 53 | 2.1.3 | **جانمایی ساختمان** | 5d | 2026-03-29 | 2026-04-04 |  | 2026-03-29 | 2026-04-04 | 5d | 2026-03-29 | 2026-04-04 | 0d |  |  | 72h | 16,080,000 | 16,080,000 |  |  |
| 54 | 2.1.3.1 | تعیین محورهای ساختمان | 1d | 2026-03-29 | 2026-03-30 | 52 | 2026-03-29 | 2026-03-30 | 1d | 2026-03-29 | 2026-03-30 | 0d |  | مهندس | 8h | 2,000,000 | 2,000,000 | 0.42 | 0.11 |
| 55 | 2.1.3.2 | علامت‌گذاری محورها | 1d | 2026-03-30 | 2026-03-31 | 54 | 2026-03-30 | 2026-03-31 | 1d | 2026-03-30 | 2026-03-31 | 0d |  | مهندس | 8h | 2,000,000 | 2,000,000 | 0.42 | 0.11 |
| 56 | 2.1.3.3 | کنترل ابعاد | 1d | 2026-03-31 | 2026-04-01 | 55 | 2026-03-31 | 2026-04-01 | 1d | 2026-03-31 | 2026-04-01 | 0d |  | مهندس | 8h | 2,000,000 | 2,000,000 | 0.42 | 0.11 |
| 57 | 2.1.3.4 | اصلاح جانمایی | 1d | 2026-04-01 | 2026-04-04 | 56 | 2026-04-01 | 2026-04-04 | 1d | 2026-04-01 | 2026-04-04 | 0d |  | مهندس; سرکارگر; کارگر ساده [300%] | 40h | 8,080,000 | 8,080,000 | 1.7 | 0.11 |
| 58 | 2.1.3.5 | تأیید جانمایی | 1d | 2026-04-04 | 2026-04-04 | 57 | 2026-04-04 | 2026-04-04 | 1d | 2026-04-04 | 2026-04-04 | 0d |  | مهندس | 8h | 2,000,000 | 2,000,000 | 0.42 | 0.11 |
| 59 | 2.2 | **تجهیز کارگاه** | 25d | 2026-03-10 | 2026-04-19 |  | 2026-03-10 | 2026-04-19 | 25d | 2026-03-10 | 2026-04-19 | 71.3d |  |  | 880h | 184,280,000 | 184,280,000 |  |  |
| 60 | 2.2.1 | **تأمین تأسیسات موقت** | 18.67d | 2026-03-10 | 2026-04-11 |  | 2026-03-10 | 2026-04-11 | 18.67d | 2026-03-10 | 2026-04-11 | 77.63d |  |  | 456h | 76,400,000 | 76,400,000 |  |  |
| 61 | 2.2.1.1 | درخواست برق موقت | 2d | 2026-03-10 | 2026-03-14 | 47 | 2026-03-10 | 2026-03-14 | 2d | 2026-03-10 | 2026-03-14 | 77.63d | 0d | مهندس | 16h | 4,000,000 | 4,000,000 | 0.84 | 0.22 |
| 62 | 2.2.1.2 | کابل‌کشی موقت | 3.33d | 2026-03-14 | 2026-03-17 | 61 | 2026-03-14 | 2026-03-17 | 3.33d | 2026-03-14 | 2026-03-17 | 77.63d | 0d | کارگر ساده [300%]; برقکار | 88h | 14,480,000 | 14,480,000 | 3.05 | 0.37 |
| 63 | 2.2.1.3 | نصب تابلو برق | 3.33d | 2026-03-17 | 2026-03-28 | 62 | 2026-03-17 | 2026-03-28 | 3.33d | 2026-03-17 | 2026-03-28 | 77.63d | 0d | کارگر ساده [300%]; برقکار | 88h | 14,480,000 | 14,480,000 | 3.05 | 0.37 |
| 64 | 2.2.1.4 | تست برق | 3.33d | 2026-03-28 | 2026-04-01 | 63 | 2026-03-28 | 2026-04-01 | 3.33d | 2026-03-28 | 2026-04-01 | 77.63d | 0d | کارگر ساده [300%]; برقکار | 88h | 14,480,000 | 14,480,000 | 3.05 | 0.37 |
| 65 | 2.2.1.5 | بهره‌برداری برق | 6.67d | 2026-04-01 | 2026-04-11 | 64 | 2026-04-01 | 2026-04-11 | 6.67d | 2026-04-01 | 2026-04-11 | 77.63d |  | کارگر ساده [300%]; برقکار | 176h | 28,960,000 | 28,960,000 | 6.1 | 0.75 |
| 66 | 2.2.2 | **تأمین آب موقت** | 12d | 2026-03-11 | 2026-04-04 |  | 2026-03-11 | 2026-04-04 | 12d | 2026-03-11 | 2026-04-04 | 83.3d |  |  | 120h | 51,080,000 | 51,080,000 |  |  |
| 67 | 2.2.2.1 | درخواست انشعاب | 5d | 2026-03-11 | 2026-03-18 | 47SS+2d | 2026-03-11 | 2026-03-18 | 5d | 2026-03-11 | 2026-03-18 | 83.3d | 0d | مهندس | 40h | 10,000,000 | 10,000,000 | 2.11 | 0.56 |
| 68 | 2.2.2.2 | لوله‌کشی موقت | 3d | 2026-03-18 | 2026-03-29 | 67 | 2026-03-18 | 2026-03-29 | 3d | 2026-03-18 | 2026-03-29 | 83.3d | 0d | تاسیساتی; کارگر ساده; لوله [150 متر] | 48h | 34,680,000 | 34,680,000 | 7.31 | 0.34 |
| 69 | 2.2.2.3 | نصب شیر | 1d | 2026-03-29 | 2026-03-30 | 68 | 2026-03-29 | 2026-03-30 | 1d | 2026-03-29 | 2026-03-30 | 83.3d | 0d | تاسیساتی | 8h | 1,600,000 | 1,600,000 | 0.34 | 0.11 |
| 70 | 2.2.2.4 | تست آب | 2d | 2026-03-30 | 2026-04-01 | 69 | 2026-03-30 | 2026-04-01 | 2d | 2026-03-30 | 2026-04-01 | 83.3d | 0d | تاسیساتی | 16h | 3,200,000 | 3,200,000 | 0.67 | 0.22 |
| 71 | 2.2.2.5 | بهره‌برداری آب | 1d | 2026-04-01 | 2026-04-04 | 70 | 2026-04-01 | 2026-04-04 | 1d | 2026-04-01 | 2026-04-04 | 83.3d |  | تاسیساتی | 8h | 1,600,000 | 1,600,000 | 0.34 | 0.11 |
| 72 | 2.2.3 | **تجهیز کارگاه** | 11d | 2026-04-05 | 2026-04-19 |  | 2026-04-05 | 2026-04-19 | 11d | 2026-04-05 | 2026-04-19 | 71.3d |  |  | 304h | 56,800,000 | 56,800,000 |  |  |
| 73 | 2.2.3.1 | استقرار انبار | 3.33d | 2026-04-05 | 2026-04-08 | 58 | 2026-04-05 | 2026-04-08 | 3.33d | 2026-04-05 | 2026-04-08 | 71.3d | 0d | سرکارگر; کارگر ساده [300%] | 96h | 17,600,000 | 17,600,000 | 3.71 | 0.37 |
| 74 | 2.2.3.2 | استقرار دفتر کارگاهی | 1.67d | 2026-04-08 | 2026-04-11 | 73 | 2026-04-08 | 2026-04-11 | 1.67d | 2026-04-08 | 2026-04-11 | 71.3d | 0d | کارگر ساده [300%] | 40h | 6,800,000 | 6,800,000 | 1.43 | 0.19 |
| 75 | 2.2.3.3 | تجهیز ابزار | 3.33d | 2026-04-11 | 2026-04-15 | 74 | 2026-04-11 | 2026-04-15 | 3.33d | 2026-04-11 | 2026-04-15 | 71.3d | 0d | کارگر ساده [300%] | 80h | 13,600,000 | 13,600,000 | 2.87 | 0.37 |
| 76 | 2.2.3.4 | ایمن‌سازی کارگاه | 1.67d | 2026-04-15 | 2026-04-18 | 75 | 2026-04-15 | 2026-04-18 | 1.67d | 2026-04-15 | 2026-04-18 | 71.3d | 0d | کارگر ساده [300%] | 40h | 6,800,000 | 6,800,000 | 1.43 | 0.19 |
| 77 | 2.2.3.5 | تأیید تجهیز | 1d | 2026-04-18 | 2026-04-19 | 76 | 2026-04-18 | 2026-04-19 | 1d | 2026-04-18 | 2026-04-19 | 71.3d |  | سرکارگر | 48h | 12,000,000 | 12,000,000 | 2.53 | 0.11 |

| ID | WBS | Task | Type | Duration | Start | Finish | Predecessors | Baseline start | Baseline finish | Baseline duration | Baseline 1 start | Baseline 1 finish | Total slack | Free slack | Resources | Work | Cost | Baseline cost | Text1 | Text2 |
| --- | --- | --- | --- | --- | --- | --- | --- | --- | --- | --- | --- | --- | --- | --- | --- | --- | --- | --- | --- | --- |
| 78 | 3 | **اجرای سازه و سفت‌کاری** |  | 64.3d | 2026-04-04 | 2026-06-28 |  | 2026-04-04 | 2026-06-28 | 64.3d | 2026-04-04 | 2026-06-28 | 0d |  |  | 1743.2h | 337,064,000 | 337,064,000 |  |  |
| 79 | 3.1 | **اجرای فونداسیون** |  | 16d | 2026-04-04 | 2026-04-25 |  | 2026-04-04 | 2026-04-25 | 16d | 2026-04-04 | 2026-04-25 | 0d |  |  | 432h | 80,200,000 | 80,200,000 |  |  |
| 80 | 3.1.1 | **خاکبرداری** |  | 3d | 2026-04-04 | 2026-04-06 |  | 2026-04-04 | 2026-04-06 | 3d | 2026-04-04 | 2026-04-06 | 0d |  |  | 176h | 33,840,000 | 33,840,000 |  |  |
| 81 | 3.1.1.1 | تعیین حدود گود |  | 1d | 2026-04-05 | 2026-04-05 | 58 | 2026-04-05 | 2026-04-05 | 1d | 2026-04-05 | 2026-04-05 | 0d |  | مهندس | 8h | 2,000,000 | 2,000,000 | 0.42 | 0.11 |
| 82 | 3.1.1.2 | تجهیز ماشین‌آلات |  | 1d | 2026-04-06 | 2026-04-06 | 81 | 2026-04-06 | 2026-04-06 | 1d | 2026-04-06 | 2026-04-06 | 0d |  | سرکارگر | 8h | 2,000,000 | 2,000,000 | 0.42 | 0.11 |
| 83 | 3.1.1.3 | اجرای خاکبرداری |  | 1d | 2026-04-04 | 2026-04-04 | 82SS-2d | 2026-04-04 | 2026-04-04 | 1d | 2026-04-04 | 2026-04-04 | 0d |  | سرکارگر [200%]; کارگر ساده [1200%]; ماشین آلات [200%] | 128h | 23,520,000 | 23,520,000 | 4.96 | 0.11 |
| 84 | 3.1.1.4 | حمل خاک |  | 1d | 2026-04-05 | 2026-04-05 | 83 | 2026-04-05 | 2026-04-05 | 1d | 2026-04-05 | 2026-04-05 | 0d |  | کارگر ساده [200%]; ماشین آلات | 24h | 4,320,000 | 4,320,000 | 0.91 | 0.11 |
| 85 | 3.1.1.5 | کنترل تراز |  | 1d | 2026-04-06 | 2026-04-06 | 84 | 2026-04-06 | 2026-04-06 | 1d | 2026-04-06 | 2026-04-06 | 0d |  | مهندس | 8h | 2,000,000 | 2,000,000 | 0.42 | 0.11 |
| 86 | 3.1.2 | **بتن مگر** |  | 9d | 2026-04-07 | 2026-04-19 |  | 2026-04-07 | 2026-04-19 | 9d | 2026-04-07 | 2026-04-19 | 0d |  |  | 120h | 21,120,000 | 21,120,000 |  |  |
| 87 | 3.1.2.1 | مرطوب‌سازی |  | 1d | 2026-04-07 | 2026-04-07 | 85 | 2026-04-07 | 2026-04-07 | 1d | 2026-04-07 | 2026-04-07 | 0d |  | کارگر ساده [300%] | 24h | 4,080,000 | 4,080,000 | 0.86 | 0.11 |
| 88 | 3.1.2.2 | بتن‌ریزی مگر |  | 1d | 2026-04-08 | 2026-04-08 | 87 | 2026-04-08 | 2026-04-08 | 1d | 2026-04-08 | 2026-04-08 | 0d |  | کارگر ساده [300%]; ماشین آلات [300%] | 48h | 8,880,000 | 8,880,000 | 1.87 | 0.11 |
| 89 | 3.1.2.3 | تراز سطح |  | 1d | 2026-04-11 | 2026-04-11 | 88 | 2026-04-11 | 2026-04-11 | 1d | 2026-04-11 | 2026-04-11 | 0d |  | کارگر ساده [300%] | 24h | 4,080,000 | 4,080,000 | 0.86 | 0.11 |
| 90 | 3.1.2.4 | عمل‌آوری |  | 1d | 2026-04-18 | 2026-04-19 | 89FS+5d | 2026-04-18 | 2026-04-19 | 1d | 2026-04-18 | 2026-04-19 | 0d |  | کارگر ساده [300%] | 24h | 4,080,000 | 4,080,000 | 0.86 | 0.11 |
| 91 | 3.1.3 | **فونداسیون** |  | 4d | 2026-04-19 | 2026-04-25 |  | 2026-04-19 | 2026-04-25 | 4d | 2026-04-19 | 2026-04-25 | 0d |  |  | 136h | 25,240,000 | 25,240,000 |  |  |
| 92 | 3.1.3.1 | آرماتوربندی |  | 1d | 2026-04-19 | 2026-04-20 | 90 | 2026-04-19 | 2026-04-20 | 1d | 2026-04-19 | 2026-04-20 | 0d |  | سرکارگر | 8h | 2,000,000 | 2,000,000 | 0.42 | 0.11 |
| 93 | 3.1.3.2 | قالب‌بندی |  | 1d | 2026-04-20 | 2026-04-21 | 92 | 2026-04-20 | 2026-04-21 | 1d | 2026-04-20 | 2026-04-21 | 0d |  | کارگر ساده [300%] | 24h | 4,080,000 | 4,080,000 | 0.86 | 0.11 |
| 94 | 3.1.3.3 | بتن‌ریزی |  | 1d | 2026-04-21 | 2026-04-22 | 93 | 2026-04-21 | 2026-04-22 | 1d | 2026-04-21 | 2026-04-22 | 0d |  | بتن [0.5 m3]; کارگر ساده [500%] | 40h | 7,800,000 | 7,800,000 | 1.64 | 0.11 |
| 95 | 3.1.3.4 | ویبره |  | 1d | 2026-04-21 | 2026-04-22 | 94SS | 2026-04-21 | 2026-04-22 | 1d | 2026-04-21 | 2026-04-22 | 68.3d |  | کارگر ساده [300%]; ماشین آلات [200%] | 40h | 7,280,000 | 7,280,000 | 1.53 | 0.11 |
| 96 | 3.1.3.5 | عمل‌آوری |  | 1d | 2026-04-22 | 2026-04-25 | 94 | 2026-04-22 | 2026-04-25 | 1d | 2026-04-22 | 2026-04-25 | 0d |  | کارگر ساده [300%] | 24h | 4,080,000 | 4,080,000 | 0.86 | 0.11 |
| 97 | 3.1.3.6 | پایان فوندانسیون | milestone | 0d | 2026-04-25 | 2026-04-25 | 96 | 2026-04-25 | 2026-04-25 | 0d | 2026-04-25 | 2026-04-25 | 67.3d |  |  |  |  |  |  |  |
| 98 | 3.2 | **اجرای اسکلت** |  | 30.8d | 2026-04-19 | 2026-05-30 |  | 2026-04-19 | 2026-05-30 | 30.8d | 2026-04-19 | 2026-05-30 | 5d |  |  | 1011.2h | 192,904,000 | 192,904,000 |  |  |
| 99 | 3.2.1 | **اجرای ستون‌ها** |  | 14d | 2026-04-19 | 2026-05-06 |  | 2026-04-19 | 2026-05-06 | 14d | 2026-04-19 | 2026-05-06 | 5d |  |  | 224h | 54,440,000 | 54,440,000 |  |  |
| 100 | 3.2.1.1 | برش مقاطع |  | 2d | 2026-04-19 | 2026-04-21 | 92SS | 2026-04-19 | 2026-04-21 | 2d | 2026-04-19 | 2026-04-21 | 69d | 0d | کارگر ساده [300%]; میلگرد [500 kg] | 48h | 23,160,000 | 23,160,000 | 4.88 | 0.22 |
| 101 | 3.2.1.2 | نصب ستون |  | 3d | 2026-04-26 | 2026-04-29 | 96FS+1d | 2026-04-26 | 2026-04-29 | 3d | 2026-04-26 | 2026-04-29 | 0d |  | کارگر ساده [300%] | 72h | 12,240,000 | 12,240,000 | 2.58 | 0.34 |
| 102 | 3.2.1.3 | تراز ستون |  | 3d | 2026-04-29 | 2026-05-03 | 101 | 2026-04-29 | 2026-05-03 | 3d | 2026-04-29 | 2026-05-03 | 0d |  | کارگر ساده [300%]; ماشین آلات | 48h | 8,880,000 | 8,880,000 | 1.87 | 0.34 |
| 103 | 3.2.1.4 | جوشکاری |  | 2d | 2026-05-04 | 2026-05-05 | 102 | 2026-05-04 | 2026-05-05 | 2d | 2026-05-04 | 2026-05-05 | 0d |  | کارگر ساده [300%] | 48h | 8,160,000 | 8,160,000 | 1.72 | 0.22 |
| 104 | 3.2.1.5 | کنترل کیفیت |  | 1d | 2026-05-06 | 2026-05-06 | 103 | 2026-05-06 | 2026-05-06 | 1d | 2026-05-06 | 2026-05-06 | 0d |  | مهندس | 8h | 2,000,000 | 2,000,000 | 0.42 | 0.11 |

| ID | WBS | Task | Duration | Start | Finish | Predecessors | Baseline start | Baseline finish | Baseline duration | Baseline 1 start | Baseline 1 finish | Total slack | Resources | Work | Cost | Baseline cost | Text1 | Text2 |
| --- | --- | --- | --- | --- | --- | --- | --- | --- | --- | --- | --- | --- | --- | --- | --- | --- | --- | --- |
| 105 | 3.2.2 | **اجرای تیرها** | 15.8d | 2026-04-21 | 2026-05-12 |  | 2026-04-21 | 2026-05-12 | 15.8d | 2026-04-21 | 2026-05-12 | 12d | کارگر ساده [300%] | 459.2h | 78,704,000 | 78,704,000 |  |  |
| 106 | 3.2.2.1 | برش تیر | 0.3d | 2026-04-21 | 2026-04-21 | 100 | 2026-04-21 | 2026-04-21 | 0.3d | 2026-04-21 | 2026-04-21 | 69d | کارگر ساده [500%] | 12h | 2,040,000 | 2,040,000 | 0.43 | 0.03 |
| 107 | 3.2.2.2 | نصب تیر | 1.5d | 2026-05-09 | 2026-05-10 | 104 | 2026-05-09 | 2026-05-10 | 1.5d | 2026-05-09 | 2026-05-10 | 0d | کارگر ساده [200%] | 24h | 4,080,000 | 4,080,000 | 0.86 | 0.17 |
| 108 | 3.2.2.3 | اتصال تیر | 0.3d | 2026-05-10 | 2026-05-10 | 107 | 2026-05-10 | 2026-05-10 | 0.3d | 2026-05-10 | 2026-05-10 | 0d | کارگر ساده [500%] | 12h | 2,040,000 | 2,040,000 | 0.43 | 0.03 |
| 109 | 3.2.2.4 | کنترل تراز | 1d | 2026-05-10 | 2026-05-11 | 108 | 2026-05-10 | 2026-05-11 | 1d | 2026-05-10 | 2026-05-11 | 0d | کارگر ساده [300%] | 24h | 4,080,000 | 4,080,000 | 0.86 | 0.11 |
| 110 | 3.2.2.5 | بازرسی | 1d | 2026-05-11 | 2026-05-12 | 109 | 2026-05-11 | 2026-05-12 | 1d | 2026-05-11 | 2026-05-12 | 0d | سرکارگر | 8h | 2,000,000 | 2,000,000 | 0.42 | 0.11 |
| 111 | 3.2.3 | **اجرای سقف** | 13d | 2026-05-12 | 2026-05-30 |  | 2026-05-12 | 2026-05-30 | 13d | 2026-05-12 | 2026-05-30 | 0d |  | 328h | 59,760,000 | 59,760,000 |  |  |
| 112 | 3.2.3.1 | قالب‌بندی سقف | 4d | 2026-05-12 | 2026-05-18 | 110 | 2026-05-12 | 2026-05-18 | 4d | 2026-05-12 | 2026-05-18 | 0d | کارگر ساده [300%] | 96h | 16,320,000 | 16,320,000 | 3.44 | 0.45 |
| 113 | 3.2.3.2 | آرماتوربندی سقف | 3d | 2026-05-18 | 2026-05-23 | 112 | 2026-05-18 | 2026-05-23 | 3d | 2026-05-18 | 2026-05-23 | 0d | کارگر ساده [300%] | 72h | 12,240,000 | 12,240,000 | 2.58 | 0.34 |
| 114 | 3.2.3.3 | بتن‌ریزی سقف | 1d | 2026-05-23 | 2026-05-24 | 113 | 2026-05-23 | 2026-05-24 | 1d | 2026-05-23 | 2026-05-24 | 0d | بتن [2 m3]; کارگر ساده [1200%] | 96h | 20,320,000 | 20,320,000 | 4.28 | 0.11 |
| 115 | 3.2.3.4 | ویبره | 1d | 2026-05-23 | 2026-05-24 | 114SS | 2026-05-23 | 2026-05-24 | 1d | 2026-05-23 | 2026-05-24 | 45.5d | کارگر ساده [300%] | 24h | 4,080,000 | 4,080,000 | 0.86 | 0.11 |
| 116 | 3.2.3.5 | عمل‌آوری | 5d | 2026-05-24 | 2026-05-30 | 114 | 2026-05-24 | 2026-05-30 | 5d | 2026-05-24 | 2026-05-30 | 0d | کارگر ساده | 40h | 6,800,000 | 6,800,000 | 1.43 | 0.56 |
| 117 | 3.3 | **سفت‌کاری** | 18.5d | 2026-06-02 | 2026-06-28 |  | 2026-06-02 | 2026-06-28 | 18.5d | 2026-06-02 | 2026-06-28 | 0d |  | 300h | 63,960,000 | 63,960,000 |  |  |
| 118 | 3.3.1 | **دیوارچینی** | 7d | 2026-06-02 | 2026-06-13 |  | 2026-06-02 | 2026-06-13 | 7d | 2026-06-02 | 2026-06-13 | 0d |  | 120h | 33,040,000 | 33,040,000 |  |  |
| 119 | 3.3.1.1 | آماده‌سازی مصالح | 2d | 2026-06-02 | 2026-06-06 | 116FS+3d | 2026-06-02 | 2026-06-06 | 2d | 2026-06-02 | 2026-06-06 | 0d | کارگر ساده | 16h | 2,720,000 | 2,720,000 | 0.57 | 0.22 |
| 120 | 3.3.1.2 | اجرای ملات | 1d | 2026-06-06 | 2026-06-07 | 119 | 2026-06-06 | 2026-06-07 | 1d | 2026-06-06 | 2026-06-07 | 0d | کارگر ساده [200%] | 16h | 2,720,000 | 2,720,000 | 0.57 | 0.11 |
| 121 | 3.3.1.3 | چیدن دیوار | 1d | 2026-06-07 | 2026-06-08 | 120 | 2026-06-07 | 2026-06-08 | 1d | 2026-06-07 | 2026-06-08 | 0d | کارگر ساده [200%]; آجر [2000 عدد]; سیمان [50 کیسه] | 16h | 14,720,000 | 14,720,000 | 3.1 | 0.11 |
| 122 | 3.3.1.4 | کنترل شاقول | 1d | 2026-06-07 | 2026-06-08 | 121SS | 2026-06-07 | 2026-06-08 | 1d | 2026-06-07 | 2026-06-08 | 33.5d | کارگر ساده [200%]; سرکارگر | 24h | 4,720,000 | 4,720,000 | 0.99 | 0.11 |
| 123 | 3.3.1.5 | اجرای وال‌پست | 3d | 2026-06-08 | 2026-06-13 | 121 | 2026-06-08 | 2026-06-13 | 3d | 2026-06-08 | 2026-06-13 | 0d | کارگر ساده [200%] | 48h | 8,160,000 | 8,160,000 | 1.72 | 0.34 |
| 124 | 3.3.2 | **اندود اولیه** | 11.5d | 2026-06-13 | 2026-06-28 |  | 2026-06-13 | 2026-06-28 | 11.5d | 2026-06-13 | 2026-06-28 | 0d |  | 180h | 30,920,000 | 30,920,000 |  |  |
| 125 | 3.3.2.1 | آماده‌سازی سطح | 1d | 2026-06-13 | 2026-06-14 | 123 | 2026-06-13 | 2026-06-14 | 1d | 2026-06-13 | 2026-06-14 | 0d | کارگر ساده [200%] | 16h | 2,720,000 | 2,720,000 | 0.57 | 0.11 |
| 126 | 3.3.2.2 | اجرای اندود | 7d | 2026-06-14 | 2026-06-23 | 125 | 2026-06-14 | 2026-06-23 | 7d | 2026-06-14 | 2026-06-23 | 0d | کارگر ساده [200%] | 112h | 19,040,000 | 19,040,000 | 4.01 | 0.79 |
| 127 | 3.3.2.3 | پرداخت سطح | 2d | 2026-06-23 | 2026-06-27 | 126 | 2026-06-23 | 2026-06-27 | 2d | 2026-06-23 | 2026-06-27 | 0d | کارگر ساده [200%] | 32h | 5,440,000 | 5,440,000 | 1.15 | 0.22 |
| 128 | 3.3.2.4 | کنترل کیفیت | 0.5d | 2026-06-27 | 2026-06-27 | 127 | 2026-06-27 | 2026-06-27 | 0.5d | 2026-06-27 | 2026-06-27 | 0d | سرکارگر | 4h | 1,000,000 | 1,000,000 | 0.21 | 0.06 |
| 129 | 3.3.2.5 | تأیید اندود | 1d | 2026-06-27 | 2026-06-28 | 128 | 2026-06-27 | 2026-06-28 | 1d | 2026-06-27 | 2026-06-28 | 0d | کارگر ساده [200%] | 16h | 2,720,000 | 2,720,000 | 0.57 | 0.11 |

| ID | WBS | Task | Type | Duration | Start | Finish | Predecessors | Baseline start | Baseline finish | Baseline duration | Baseline 1 start | Baseline 1 finish | Total slack | Free slack | Resources | Work | Cost | Baseline cost | Text1 | Text2 |
| --- | --- | --- | --- | --- | --- | --- | --- | --- | --- | --- | --- | --- | --- | --- | --- | --- | --- | --- | --- | --- |
| 130 | 4 | **تأسیسات و نازک‌کاری** |  | 32.5d | 2026-06-09 | 2026-07-22 |  | 2026-06-09 | 2026-07-22 | 32.5d | 2026-06-09 | 2026-07-22 | 0d |  |  | 1592h | 293,680,000 | 293,680,000 |  |  |
| 131 | 4.1 | **تأسیسات مکانیکی** |  | 10d | 2026-06-09 | 2026-06-23 |  | 2026-06-09 | 2026-06-23 | 10d | 2026-06-09 | 2026-06-23 | 5.5d |  |  | 272h | 64,720,000 | 64,720,000 |  |  |
| 132 | 4.1.1 | **لوله‌کشی آب** |  | 9d | 2026-06-09 | 2026-06-22 |  | 2026-06-09 | 2026-06-22 | 9d | 2026-06-09 | 2026-06-22 | 5.5d |  |  | 136h | 40,960,000 | 40,960,000 |  |  |
| 133 | 4.1.1.1 | جانمایی مسیر |  | 1d | 2026-06-09 | 2026-06-10 | 121SS+2d | 2026-06-09 | 2026-06-10 | 1d | 2026-06-09 | 2026-06-10 | 5.5d | 0d | مهندس | 8h | 2,000,000 | 2,000,000 | 0.42 | 0.11 |
| 134 | 4.1.1.2 | برش لوله |  | 1d | 2026-06-10 | 2026-06-13 | 133 | 2026-06-10 | 2026-06-13 | 1d | 2026-06-10 | 2026-06-13 | 5.5d | 0d | کارگر ساده [200%]; لوله [100 متر] | 16h | 19,920,000 | 19,920,000 | 4.2 | 0.11 |
| 135 | 4.1.1.3 | نصب لوله |  | 4d | 2026-06-13 | 2026-06-17 | 134 | 2026-06-13 | 2026-06-17 | 4d | 2026-06-13 | 2026-06-17 | 5.5d | 0d | کارگر ساده [200%] | 64h | 10,880,000 | 10,880,000 | 2.29 | 0.45 |
| 136 | 4.1.1.4 | اتصال |  | 2d | 2026-06-17 | 2026-06-21 | 135 | 2026-06-17 | 2026-06-21 | 2d | 2026-06-17 | 2026-06-21 | 5.5d | 0d | کارگر ساده [200%] | 32h | 5,440,000 | 5,440,000 | 1.15 | 0.22 |
| 137 | 4.1.1.5 | تست نشتی |  | 1d | 2026-06-21 | 2026-06-22 | 136 | 2026-06-21 | 2026-06-22 | 1d | 2026-06-21 | 2026-06-22 | 5.5d | 0d | کارگر ساده [200%] | 16h | 2,720,000 | 2,720,000 | 0.57 | 0.11 |
| 138 | 4.1.2 | **لوله‌کشی فاضلاب** |  | 9d | 2026-06-10 | 2026-06-23 |  | 2026-06-10 | 2026-06-23 | 9d | 2026-06-10 | 2026-06-23 | 5.5d |  |  | 136h | 23,760,000 | 23,760,000 |  |  |
| 139 | 4.1.2.1 | جانمایی رایزر |  | 1d | 2026-06-10 | 2026-06-13 | 133 | 2026-06-10 | 2026-06-13 | 1d | 2026-06-10 | 2026-06-13 | 5.5d | 0d | سرکارگر | 8h | 2,000,000 | 2,000,000 | 0.42 | 0.11 |
| 140 | 4.1.2.2 | شیب‌بندی |  | 1d | 2026-06-13 | 2026-06-14 | 139 | 2026-06-13 | 2026-06-14 | 1d | 2026-06-13 | 2026-06-14 | 5.5d | 0d | کارگر ساده [200%] | 16h | 2,720,000 | 2,720,000 | 0.57 | 0.11 |
| 141 | 4.1.2.3 | نصب لوله |  | 3d | 2026-06-14 | 2026-06-17 | 140 | 2026-06-14 | 2026-06-17 | 3d | 2026-06-14 | 2026-06-17 | 5.5d | 0d | کارگر ساده [200%] | 48h | 8,160,000 | 8,160,000 | 1.72 | 0.34 |
| 142 | 4.1.2.4 | نصب سیفون |  | 2d | 2026-06-17 | 2026-06-21 | 141 | 2026-06-17 | 2026-06-21 | 2d | 2026-06-17 | 2026-06-21 | 5.5d | 0d | کارگر ساده [200%] | 32h | 5,440,000 | 5,440,000 | 1.15 | 0.22 |
| 143 | 4.1.2.5 | تست آب‌بندی |  | 2d | 2026-06-21 | 2026-06-23 | 142 | 2026-06-21 | 2026-06-23 | 2d | 2026-06-21 | 2026-06-23 | 5.5d | 0d | کارگر ساده [200%] | 32h | 5,440,000 | 5,440,000 | 1.15 | 0.22 |
| 144 | 4.2 | **تأسیسات الکتریکی** |  | 23d | 2026-06-09 | 2026-07-11 |  | 2026-06-09 | 2026-07-11 | 23d | 2026-06-09 | 2026-07-11 | 8.5d |  |  | 272h | 40,160,000 | 40,160,000 |  |  |
| 145 | 4.2.1 | **لوله‌گذاری برق** |  | 5d | 2026-06-09 | 2026-06-16 |  | 2026-06-09 | 2026-06-16 | 5d | 2026-06-09 | 2026-06-16 | 8.5d |  |  | 96h | 16,960,000 | 16,960,000 |  |  |
| 146 | 4.2.1.1 | جانمایی مسیر |  | 1d | 2026-06-09 | 2026-06-10 | 133SS | 2026-06-09 | 2026-06-10 | 1d | 2026-06-09 | 2026-06-10 | 8.5d | 0d | سرکارگر | 8h | 2,000,000 | 2,000,000 | 0.42 | 0.11 |
| 147 | 4.2.1.2 | نصب لوله |  | 1d | 2026-06-10 | 2026-06-13 | 146 | 2026-06-10 | 2026-06-13 | 1d | 2026-06-10 | 2026-06-13 | 8.5d | 0d | کارگر ساده [500%] | 40h | 6,800,000 | 6,800,000 | 1.43 | 0.11 |
| 148 | 4.2.1.3 | تثبیت لوله |  | 1d | 2026-06-13 | 2026-06-14 | 147 | 2026-06-13 | 2026-06-14 | 1d | 2026-06-13 | 2026-06-14 | 8.5d | 0d | کارگر ساده [200%] | 16h | 2,720,000 | 2,720,000 | 0.57 | 0.11 |
| 149 | 4.2.1.4 | کنترل مسیر |  | 2d | 2026-06-14 | 2026-06-16 | 148 | 2026-06-14 | 2026-06-16 | 2d | 2026-06-14 | 2026-06-16 | 8.5d | 0d | کارگر ساده [200%] | 32h | 5,440,000 | 5,440,000 | 1.15 | 0.22 |
| 150 | 4.2.1.5 | تأیید | milestone | 0d | 2026-06-16 | 2026-06-16 | 149 | 2026-06-16 | 2026-06-16 | 0d | 2026-06-16 | 2026-06-16 | 8.5d | 0d |  |  |  |  |  |  |
| 151 | 4.2.2 | **سیم‌کشی** |  | 18d | 2026-06-16 | 2026-07-11 |  | 2026-06-16 | 2026-07-11 | 18d | 2026-06-16 | 2026-07-11 | 9.5d |  |  | 176h | 23,200,000 | 23,200,000 |  |  |
| 152 | 4.2.2.1 | برش سیم |  | 1d | 2026-06-16 | 2026-06-17 | 150 | 2026-06-16 | 2026-06-17 | 1d | 2026-06-16 | 2026-06-17 | 9.5d | 0d | کارگر ساده [200%] | 16h | 2,720,000 | 2,720,000 | 0.57 | 0.11 |
| 153 | 4.2.2.2 | عبور سیم |  | 3d | 2026-06-17 | 2026-06-22 | 152 | 2026-06-17 | 2026-06-22 | 3d | 2026-06-17 | 2026-06-22 | 9.5d | 0d | کارگر ساده [200%] | 48h | 8,160,000 | 8,160,000 | 1.72 | 0.34 |
| 154 | 4.2.2.3 | اتصال سیم |  | 12d | 2026-06-22 | 2026-07-07 | 153 | 2026-06-22 | 2026-07-07 | 12d | 2026-06-22 | 2026-07-07 | 9.5d | 0d | برقکار | 96h | 10,560,000 | 10,560,000 | 2.22 | 1.35 |
| 155 | 4.2.2.4 | تست اولیه |  | 1d | 2026-07-07 | 2026-07-08 | 154 | 2026-07-07 | 2026-07-08 | 1d | 2026-07-07 | 2026-07-08 | 9.5d | 0d | برقکار | 8h | 880,000 | 880,000 | 0.19 | 0.11 |
| 156 | 4.2.2.5 | تأیید سیم‌کشی |  | 1d | 2026-07-08 | 2026-07-11 | 155 | 2026-07-08 | 2026-07-11 | 1d | 2026-07-08 | 2026-07-11 | 9.5d |  | برقکار | 8h | 880,000 | 880,000 | 0.19 | 0.11 |

| ID | WBS | Task | Type | Duration | Start | Finish | Predecessors | Baseline start | Baseline finish | Baseline duration | Baseline 1 start | Baseline 1 finish | Total slack | Free slack | Resources | Work | Cost | Baseline cost | Text1 | Text2 |
| --- | --- | --- | --- | --- | --- | --- | --- | --- | --- | --- | --- | --- | --- | --- | --- | --- | --- | --- | --- | --- |
| 157 | 4.3 | **نازک‌کاری و تحویل** |  | 24.5d | 2026-06-21 | 2026-07-22 |  | 2026-06-21 | 2026-07-22 | 24.5d | 2026-06-21 | 2026-07-22 | 0d |  |  | 1048h | 188,800,000 | 188,800,000 |  |  |
| 158 | 4.3.1 | **نازک‌کاری داخلی** |  | 8d | 2026-06-21 | 2026-06-30 |  | 2026-06-21 | 2026-06-30 | 8d | 2026-06-21 | 2026-06-30 | 5.5d |  |  | 288h | 50,800,000 | 50,800,000 |  |  |
| 159 | 4.3.1.1 | گچ‌کاری |  | 2d | 2026-06-21 | 2026-06-23 | 150, 137SS | 2026-06-21 | 2026-06-23 | 2d | 2026-06-21 | 2026-06-23 | 5.5d | 0d | کارگر ساده [500%] | 80h | 13,600,000 | 13,600,000 | 2.87 | 0.22 |
| 160 | 4.3.1.2 | کف‌سازی |  | 2d | 2026-06-23 | 2026-06-27 | 143, 159 | 2026-06-23 | 2026-06-27 | 2d | 2026-06-23 | 2026-06-27 | 5.5d | 0d | کارگر ساده [500%]; سیمان [10 کیسه] | 80h | 14,800,000 | 14,800,000 | 3.12 | 0.22 |
| 161 | 4.3.1.3 | نقاشی داخلی |  | 2d | 2026-06-27 | 2026-06-28 | 160 | 2026-06-27 | 2026-06-28 | 2d | 2026-06-27 | 2026-06-28 | 5.5d | 0d | کارگر ساده [500%] | 80h | 13,600,000 | 13,600,000 | 2.87 | 0.22 |
| 162 | 4.3.1.4 | نصب درب داخلی |  | 1d | 2026-06-28 | 2026-06-29 | 161 | 2026-06-28 | 2026-06-29 | 1d | 2026-06-28 | 2026-06-29 | 5.5d | 0d | کارگر ساده [500%] | 40h | 6,800,000 | 6,800,000 | 1.43 | 0.11 |
| 163 | 4.3.1.5 | کنترل کیفیت |  | 1d | 2026-06-29 | 2026-06-30 | 162 | 2026-06-29 | 2026-06-30 | 1d | 2026-06-29 | 2026-06-30 | 5.5d |  | سرکارگر | 8h | 2,000,000 | 2,000,000 | 0.42 | 0.11 |
| 164 | 4.3.2 | **نازک‌کاری خارجی** |  | 9d | 2026-06-27 | 2026-07-08 |  | 2026-06-27 | 2026-07-08 | 9d | 2026-06-27 | 2026-07-08 | 0d |  |  | 248h | 42,800,000 | 42,800,000 |  |  |
| 165 | 4.3.2.1 | نمای ساختمان |  | 2d | 2026-06-27 | 2026-06-29 | 129SS | 2026-06-27 | 2026-06-29 | 2d | 2026-06-27 | 2026-06-29 | 0d |  | کارگر ساده [500%] | 80h | 13,600,000 | 13,600,000 | 2.87 | 0.22 |
| 166 | 4.3.2.2 | نصب درب و پنجره |  | 2d | 2026-06-29 | 2026-07-01 | 165 | 2026-06-29 | 2026-07-01 | 2d | 2026-06-29 | 2026-07-01 | 0d |  | کارگر ساده [500%] | 80h | 13,600,000 | 13,600,000 | 2.87 | 0.22 |
| 167 | 4.3.2.3 | عایق‌کاری |  | 1d | 2026-07-01 | 2026-07-04 | 166 | 2026-07-01 | 2026-07-04 | 1d | 2026-07-01 | 2026-07-04 | 0d |  | کارگر ساده [500%] | 40h | 6,800,000 | 6,800,000 | 1.43 | 0.11 |
| 168 | 4.3.2.4 | رنگ‌آمیزی خارجی |  | 1d | 2026-07-04 | 2026-07-05 | 167 | 2026-07-04 | 2026-07-05 | 1d | 2026-07-04 | 2026-07-05 | 0d |  | کارگر ساده [500%] | 40h | 6,800,000 | 6,800,000 | 1.43 | 0.11 |
| 169 | 4.3.2.5 | کنترل نهایی |  | 1d | 2026-07-07 | 2026-07-08 | 168FS+2d | 2026-07-07 | 2026-07-08 | 1d | 2026-07-07 | 2026-07-08 | 0d |  | مهندس | 8h | 2,000,000 | 2,000,000 | 0.42 | 0.11 |
| 170 | 4.3.3 | **تحویل پروژه** |  | 11d | 2026-07-08 | 2026-07-22 |  | 2026-07-08 | 2026-07-22 | 11d | 2026-07-08 | 2026-07-22 | 0d |  |  | 512h | 95,200,000 | 95,200,000 |  |  |
| 171 | 4.3.3.1 | نظافت نهایی |  | 2d | 2026-07-08 | 2026-07-11 | 169, 163 | 2026-07-08 | 2026-07-11 | 2d | 2026-07-08 | 2026-07-11 | 0d |  | کارگر ساده [500%] | 80h | 13,600,000 | 13,600,000 | 2.87 | 0.22 |
| 172 | 4.3.3.2 | رفع نواقص |  | 3d | 2026-07-11 | 2026-07-14 | 171 | 2026-07-11 | 2026-07-14 | 3d | 2026-07-11 | 2026-07-14 | 0d |  | تاسیساتی; مهندس; سرکارگر; برقکار; کارگر ساده [1200%] | 384h | 68,400,000 | 68,400,000 | 14.41 | 0.34 |
| 173 | 4.3.3.3 | تحویل موقت |  | 3d | 2026-07-14 | 2026-07-19 | 172 | 2026-07-14 | 2026-07-19 | 3d | 2026-07-14 | 2026-07-19 | 0d |  | مهندس | 24h | 6,000,000 | 6,000,000 | 1.26 | 0.34 |
| 174 | 4.3.3.4 | تحویل قطعی |  | 1d | 2026-07-19 | 2026-07-20 | 173 | 2026-07-19 | 2026-07-20 | 1d | 2026-07-19 | 2026-07-20 | 0d |  | مدیر پروژه | 8h | 2,400,000 | 2,400,000 | 0.51 | 0.11 |
| 175 | 4.3.3.5 | بستن پروژه |  | 2d | 2026-07-20 | 2026-07-22 | 174 | 2026-07-20 | 2026-07-22 | 2d | 2026-07-20 | 2026-07-22 | 0d |  | مدیر پروژه | 16h | 4,800,000 | 4,800,000 | 1.01 | 0.22 |
| 176 | 4.3.3.6 | پایان پروژه | milestone | 0d | 2026-07-22 | 2026-07-22 | 175 | 2026-07-22 | 2026-07-22 | 0d | 2026-07-22 | 2026-07-22 | 0d |  |  |  |  |  |  |  |
